# MLo_Metabolic_v1_final

How a schedule from MS Project changed from version to version. A marks actual dates.

## Version 1 (saved 2023-08-20)

Note of the change: bug fixing: generation of absolute dates

| ID | WBS | Task | Duration | Start | Finish | Predecessors | Total float | Constraint |
| --- | --- | --- | --- | --- | --- | --- | --- | --- |
| 1 | 1 | **Proyecto MetaboliCare** | 193d | 2023-09-18 | 2024-06-12 |  | 0d |  |
| 2 |  | Contract signing | 0d | 2023-09-18 | 2023-09-18 |  | 0d | start no earlier than 2023-09-18 |
| 3 |  | Project planning | 30d | 2023-09-18 | 2023-10-27 | 2 | 0d |  |
| 4 |  | Project execution and controlling | 159d | 2023-10-30 | 2024-06-06 | 3 | 0d |  |
| 5 |  | Conceptual design | 5d | 2023-10-30 | 2023-11-03 | 3 | 0d |  |
| 6 |  | Functional requirements definition | 5d | 2023-11-06 | 2023-11-10 | 5 | 0d |  |
| 7 |  | Zone 1 design | 8d | 2023-11-13 | 2023-11-22 | 6 | 0d |  |
| 8 |  | Zone 2 design | 8d | 2023-11-13 | 2023-11-22 | 6 | 0d |  |
| 9 |  | Zone 3 design | 8d | 2023-11-13 | 2023-11-22 | 6 | 0d |  |
| 10 |  | Construction tramits | 30d | 2023-11-23 | 2024-01-03 | 7, 8, 9 | 0d |  |
| 11 |  | Operations licenses | 25d | 2023-11-23 | 2023-12-27 | 7, 8, 9 | 114d |  |
| 12 |  | Insurance contract | 9d | 2023-11-23 | 2023-12-05 | 7, 8, 9 | 130d |  |
| 13 |  | Bidding | 15d | 2023-11-23 | 2023-12-13 | 7, 8, 9 | 15d |  |
| 14 |  | Pipeline system zone 1 | 7d | 2024-01-04 | 2024-01-12 | 7, 10, 13 | 45d |  |
| 15 |  | Electrical system zone 1 | 10d | 2024-01-15 | 2024-01-26 | 13, 14 | 45d |  |
| 16 |  | Air Condition System zone 1 | 5d | 2024-01-29 | 2024-02-02 | 13, 15 | 48d |  |
| 17 |  | Floor adaptation zone 1 | 3d | 2024-02-05 | 2024-02-07 | 15, 16 | 48d |  |
| 18 |  | Installation of mirrors | 2d | 2024-02-08 | 2024-02-09 | 15, 17 | 48d |  |
| 19 |  | Replacement of toilets zone 1 | 5d | 2024-02-12 | 2024-02-16 | 15, 18 | 48d |  |
| 20 |  | Installation of stair | 7d | 2024-01-29 | 2024-02-06 | 15 | 45d |  |
| 21 |  | Elevator replacement | 7d | 2024-02-07 | 2024-02-15 | 15, 20 | 45d |  |
| 22 |  | Installation of turnstiles for employee entry | 2d | 2024-02-16 | 2024-02-19 | 21 | 45d |  |
| 23 |  | Installation of fiber optics for WiFi zone 1 | 1d | 2024-02-20 | 2024-02-20 | 22, 14 | 45d |  |
| 24 |  | Installation of water dispensers | 1d | 2024-02-21 | 2024-02-21 | 23 | 45d |  |
| 25 |  | Wall patching on floor 1 | 8d | 2024-02-22 | 2024-03-04 | 24, 19 | 45d |  |
| 26 |  | Painting walls on floor 1 | 5d | 2024-03-12 | 2024-03-18 | 25FS+5d | 45d |  |
| 27 |  | Adaptation and installation of machinary | 6d | 2024-03-19 | 2024-03-26 | 26 | 45d |  |
| 28 |  | Furniture installation | 2d | 2024-03-27 | 2024-03-28 | 26, 27 | 45d |  |
| 29 |  | Pipeline system zone 2 | 6d | 2024-01-04 | 2024-01-11 | 8, 10, 13 | 0d |  |
| 30 |  | Electrical system zone 2 | 9d | 2024-01-12 | 2024-01-24 | 13, 29 | 0d |  |
| 31 |  | Air Condition System zone 2 | 5d | 2024-01-25 | 2024-01-31 | 13, 30 | 0d |  |
| 32 |  | Floor adaptation zone 2 | 3d | 2024-02-01 | 2024-02-05 | 30, 31 | 0d |  |
| 33 |  | Installation electrical stair | 14d | 2024-01-25 | 2024-02-13 | 30 | 2d |  |
| 34 |  | Replacement of toilets zone 2 | 8d | 2024-02-06 | 2024-02-15 | 32 | 0d |  |
| 35 |  | Elevator door adaptation | 3d | 2024-02-16 | 2024-02-20 | 34, 32, 33 | 0d |  |
| 36 |  | Installation of fiber optics for WiFi zone 2 | 3d | 2024-02-16 | 2024-02-20 | 32FS+8d | 0d |  |
| 37 |  | Wall patching on floor zone 2 | 8d | 2024-02-21 | 2024-03-01 | 36, 35 | 0d |  |
| 38 |  | Painting walls on floor zone 2 | 5d | 2024-03-11 | 2024-03-15 | 37FS+5d | 0d |  |
| 39 |  | Nurses room adaptation | 3d | 2024-03-18 | 2024-03-20 | 38 | 51d |  |
| 40 |  | Medical consultancy rooms | 8d | 2024-03-18 | 2024-03-27 | 38 | 0d |  |
| 41 |  | Pipeline system zone 3 | 6d | 2024-03-28 | 2024-04-04 | 40, 13 | 0d |  |
| 42 |  | Electrical system zone 3 | 9d | 2024-04-05 | 2024-04-17 | 13, 41 | 0d |  |
| 43 |  | Air Condition System zone 3 | 5d | 2024-04-18 | 2024-04-24 | 13, 42 | 0d |  |
| 44 |  | Replacement of toilets zone 3 | 3d | 2024-04-25 | 2024-04-29 | 43 | 0d |  |
| 45 |  | Elevator door adaptation | 2d | 2024-04-25 | 2024-04-26 | 42FS+5d | 3d |  |
| 46 |  | Installation of fiber optics for WiFi zone 3 | 2d | 2024-04-30 | 2024-05-01 | 41, 44 | 0d |  |
| 47 |  | Industrial kitchen installment | 10d | 2024-04-18 | 2024-05-01 | 41, 42 | 0d |  |
| 48 |  | Wall patching on floor zone 3 | 8d | 2024-05-02 | 2024-05-13 | 46, 45, 47 | 0d |  |
| 49 |  | Painting walls on floor zone 3 | 5d | 2024-05-21 | 2024-05-27 | 48FS+5d | 0d |  |
| 50 |  | Clients room adaptation | 3d | 2024-05-28 | 2024-05-30 | 49 | 0d |  |
| 51 |  | Dining room adaptation | 3d | 2024-05-28 | 2024-05-30 | 49 | 0d |  |
| 52 |  | Control Center installment | 1d | 2024-05-30 | 2024-05-30 | 49FS+2d | 0d |  |
| 53 |  | Equipment functionality test | 3d | 2024-05-31 | 2024-06-04 | 28, 40, 52, 39, 50, 51 | 0d |  |
| 54 |  | Final test supporting document | 1d | 2024-06-05 | 2024-06-05 | 10, 11, 12, 53 | 0d |  |
| 55 |  | Operations manual | 1d | 2024-06-06 | 2024-06-06 | 54 | 0d |  |
| 56 |  | Contracts closure | 3d | 2024-06-07 | 2024-06-11 | 4, 55 | 0d |  |
| 57 |  | Project closing report | 1d | 2024-06-12 | 2024-06-12 | 56 | 0d |  |
| 58 |  | ACCEPTANCE Project 1 | 0d | 2024-06-12 | 2024-06-12 | 57 | 0d |  |

## Version 2 (saved 2023-08-20)

Note of the change: modified: inputs/P.mpp

Last finish stays 2024-06-12.

Changed:

| ID | Task | Finish | Duration | Total float |
| --- | --- | --- | --- | --- |
| 4 | Project execution and controlling | 2024-06-06 → 2024-05-24 (-13d) | 159d → 150d | 0d → 9d |
